Schedule from GanttProject, 2022-05-16 to 2022-07-07.

## Calendars

- Project calendar: Mon-Fri working; Sat-Sun off.

## Resources

| Resource |
| --- |
| 김희철 |
| 박효민 |
| 황신우 |
| 최상준 |
| 박형주 |
| 최형욱 |
| 심호정 |
| 최영환 |
| 권다혜 |
| 강민규 |

## Schedule

| ID | WBS | Task | Duration | Start | Finish | Predecessors | Complete | Resources |
| --- | --- | --- | --- | --- | --- | --- | --- | --- |
| 1 | 1 | **PBV01** | 39d | 2022-05-16 | 2022-07-07 |  | 50% |  |
| 2 | 1.1 | **OTA Test** | 17d | 2022-06-15 | 2022-07-07 |  |  |  |
| 3 | 1.1.1 | OTA 1차 배포 TF | 17d | 2022-06-15 | 2022-07-07 |  |  | 박형주 [30%]; 최형욱 [30%] |
| 4 | 1.2 | **StatusBar Battery Icon** | 21d | 2022-05-17 | 2022-06-14 |  | 100% |  |
| 5 | 1.2.1 | 영업/휴무/Navi화면/비Navi화면 Battery Icon UI작업 | 4d | 2022-05-17 | 2022-05-20 |  | 100% | 박효민 |
| 6 | 1.2.2 | Property 값과 Data 연동 | 1d | 2022-05-23 | 2022-05-23 | 5 | 100% | 박효민 |
| 7 | 1.2.3 | Gui 적용 | 1d | 2022-06-13 | 2022-06-13 | 46 | 100% | 박효민 |
| 8 | 1.2.4 | 실차 연동 Test | 1d | 2022-06-14 | 2022-06-14 | 7 | 100% | 김희철 [10%]; 박효민 [90%] |
| 9 | 1.3 | **LocaAppMeter** | 1d | 2022-05-20 | 2022-05-20 |  | 100% |  |
| 10 | 1.3.1 | Loca Loading F/W 생성 및 전달 | 1d | 2022-05-20 | 2022-05-20 |  | 100% | 황신우 |
| 11 | 1.4 | **DriverRegist** | 10d | 2022-05-16 | 2022-05-27 |  | 100% |  |
| 12 | 1.4.1 | Driver Regist에 Loca 추가 | 5d | 2022-05-16 | 2022-05-20 |  | 100% | 박형주 |
| 13 | 1.4.2 | Driver Regist에 Loca추가 검증기간 | 5d | 2022-05-23 | 2022-05-27 | 12 | 100% | 박형주 |
| 14 | 1.4.3 | 약관동의에서 개인정보보호방침삭제 | 3d | 2022-05-23 | 2022-05-25 |  | 100% | 박형주 |
| 15 | 1.4.4 | CashBee 추가 관련 (Ordering, 체크박스 작업) | 1d | 2022-05-26 | 2022-05-26 | 14 | 100% | 박형주 |
| 16 | 1.5 | **AndroidAuto** | 1d | 2022-05-23 | 2022-05-23 |  |  |  |
| 17 | 1.5.1 | 오민호 책임 요청사항 분석(Key처리) | 1d | 2022-05-23 | 2022-05-23 |  |  | 황신우 |
| 18 | 1.6 | **CarPlay** | 10d | 2022-06-13 | 2022-06-24 |  | 40% |  |
| 19 | 1.6.1 | **WBS항목 추출** | 10d | 2022-06-13 | 2022-06-24 |  | 40% | 최영환 |
| 20 | 1.6.1.1 | **Launcher** | 4d | 2022-06-13 | 2022-06-16 |  | 100% |  |
| 21 | 1.6.1.1.1 | [Launcher] CarPlay variant에 따라 아이콘 출력 | 1d | 2022-06-13 | 2022-06-13 |  | 100% | 최영환 |
| 22 | 1.6.1.1.2 | [Device Connection Settings] CarPlay 연결 상태에 따른 Icon Activation | 1d | 2022-06-14 | 2022-06-14 | 21 | 100% | 최영환 |
| 23 | 1.6.1.1.3 | CarPlay 미연결 상태에서 CarPlay Icon 선택시 Popup | 1d | 2022-06-15 | 2022-06-15 | 22 | 100% | 최영환 |
| 24 | 1.6.1.1.4 | CarPlay연결 상태에서 CarPlay Icon 선택시 CarPlay화면으로 전환 | 1d | 2022-06-16 | 2022-06-16 | 23 | 100% | 최영환 |

| ID | WBS | Task | Duration | Start | Finish | Predecessors | Complete | Resources |
| --- | --- | --- | --- | --- | --- | --- | --- | --- |
| 25 | 1.6.1.2 | **Device Connection Setting** | 6d | 2022-06-17 | 2022-06-24 |  |  |  |
| 26 | 1.6.1.2.1 | After CarPlay Connected, Add Device in Device list | 1d | 2022-06-17 | 2022-06-17 | 24 |  | 최영환 |
| 27 | 1.6.1.2.2 | Display CarPlay Icon in Device List Item | 1d | 2022-06-20 | 2022-06-20 | 26 |  | 최영환 |
| 28 | 1.6.1.2.3 | Icon Dimming according to connection | 1d | 2022-06-21 | 2022-06-21 | 27 |  | 최영환 |
| 29 | 1.6.1.2.4 | Store/Delete CarPlay Device info | 1d | 2022-06-22 | 2022-06-22 | 28 |  | 최영환 |
| 30 | 1.6.1.2.5 | Show error popup during connecting | 1d | 2022-06-23 | 2022-06-23 | 29 |  | 최영환 |
| 31 | 1.6.1.2.6 | Show wireless connection popup when it disconnected | 1d | 2022-06-24 | 2022-06-24 | 30 |  | 최영환 |
| 32 | 1.7 | **Kakao Call 배차** | 1d | 2022-06-08 | 2022-06-08 |  |  |  |
| 33 | 1.7.1 | MapAudioFocus 처리 | 1d | 2022-06-08 | 2022-06-08 |  |  |  |
| 34 | 2 | **TSD01** | 2d | 2022-06-13 | 2022-06-14 |  |  |  |
| 35 | 2.1 | Cinemo Demo App 제작(like 자연의소리) | 2d | 2022-06-13 | 2022-06-14 |  |  | 권다혜 |
| 36 | 3 | **TATA** | 30d | 2022-05-23 | 2022-07-01 |  | 58% |  |
| 37 | 3.1 | **Apply TATA GUI (3 weeks)** | 15d | 2022-05-23 | 2022-06-10 |  | 93% |  |
| 38 | 3.1.1 | [UI변경] Radio | 8d | 2022-05-23 | 2022-06-01 |  | 100% | 최상준 |
| 39 | 3.1.2 | [UI변경] MediaHome | 8d | 2022-05-25 | 2022-06-03 |  | 100% | 최상준 |
| 40 | 3.1.3 | [UI변경] AllMenu | 10d | 2022-05-23 | 2022-06-03 |  | 95% | 황신우 |
| 41 | 3.1.4 | [UI변경] Update_v2 | 4d | 2022-05-23 | 2022-05-26 |  | 100% | 박형주 |
| 42 | 3.1.5 | [UI변경] MtxIME | 6d | 2022-05-27 | 2022-06-03 | 41 | 100% | 박형주 |
| 43 | 3.1.6 | [UI변경] MtxCamera | 2d | 2022-06-06 | 2022-06-07 | 42 |  | 박형주 |
| 44 | 3.1.7 | [UI변경] MtxSettings | 10d | 2022-05-23 | 2022-06-03 |  | 80% | 박효민 |
| 45 | 3.1.8 | [UI변경] BTMusic | 4d | 2022-06-06 | 2022-06-09 | 44 | 90% | 박효민 |
| 46 | 3.1.9 | [SystemUI변경] BTMusic Split Widget | 1d | 2022-06-10 | 2022-06-10 | 45 | 100% | 박효민 |
| 47 | 3.1.10 | [UI변경] MusicPlayer | 5d | 2022-05-23 | 2022-05-27 |  | 100% | 최형욱 |
| 48 | 3.1.11 | [UI변경] VideoPlayer | 5d | 2022-05-30 | 2022-06-03 | 47 | 100% | 최형욱 |
| 49 | 3.1.12 | [UI변경] Video 내부 Setting | 4d | 2022-06-06 | 2022-06-09 | 48 | 100% | 최형욱 |
| 50 | 3.1.13 | [SystemUI변경] USB Player Split Widget | 1d | 2022-06-10 | 2022-06-10 | 49 | 100% | 최형욱 |
| 51 | 3.1.14 | [UI변경] BTPhone | 8d | 2022-05-23 | 2022-06-01 |  | 90% | 심호정 |
| 52 | 3.1.15 | [UI변경] ConnSetting | 5d | 2022-06-02 | 2022-06-08 | 51 | 100% | 박효민 [50%]; 심호정 [50%] |
| 53 | 3.1.16 | [SystemUI변경] BTCall관련 SplitWidget | 2d | 2022-06-09 | 2022-06-10 | 52 | 100% | 심호정 |

| ID | WBS | Task | Duration | Start | Finish | Predecessors | Resources |
| --- | --- | --- | --- | --- | --- | --- | --- |
| 54 | 3.2 | **TATA 잔여** | 13d | 2022-06-15 | 2022-07-01 |  |  |
| 55 | 3.2.1 | List 한글 스크롤 | 5d | 2022-06-15 | 2022-06-21 |  | 강민규 [10%] |
| 56 | 3.2.2 | **BT Phone** | 9d | 2022-06-15 | 2022-06-27 |  |  |
| 57 | 3.2.2.1 | BTPhone SWRC 동작 시 layout 변경 작업 | 1d | 2022-06-15 | 2022-06-15 |  | 심호정 |
| 58 | 3.2.2.2 | BTPhone List의 한글 인덱스 스크롤 | 4d | 2022-06-22 | 2022-06-27 | 55 | 심호정 [50%]; 강민규 [50%] |
| 59 | 3.2.2.3 | BTPhone message layout 변경 작업 | 2d | 2022-06-16 | 2022-06-17 | 57 | 심호정 |
| 60 | 3.2.2.4 | 다국어(한글 번역 되어있지 않은 문구 변경) | 1d | 2022-06-20 | 2022-06-20 | 59 | 심호정 |
| 61 | 3.2.3 | **BT Music** | 4d | 2022-06-22 | 2022-06-27 |  |  |
| 62 | 3.2.3.1 | BT Music의 Device change | 1d | 2022-06-23 | 2022-06-23 | 69 | 박효민 |
| 63 | 3.2.3.2 | BT Music List의 한글 인덱스 스크롤 | 4d | 2022-06-22 | 2022-06-27 | 55 | 박효민; 강민규 |
| 64 | 3.2.4 | **Setting** | 6d | 2022-06-15 | 2022-06-22 |  |  |
| 65 | 3.2.4.1 | 다국어 | 1d | 2022-06-15 | 2022-06-15 |  | 박효민 |
| 66 | 3.2.4.2 | Delete unsupported Menu | 1d | 2022-06-16 | 2022-06-16 | 65 | 박효민 |
| 67 | 3.2.4.3 | General Setting >> Alarm | 1d | 2022-06-17 | 2022-06-17 | 66 | 박효민 |
| 68 | 3.2.4.4 | Media Sound Effects Button | 2d | 2022-06-20 | 2022-06-21 | 67 | 박효민 |
| 69 | 3.2.4.5 | 초기화 | 1d | 2022-06-22 | 2022-06-22 | 68 | 박효민 |
| 70 | 3.2.5 | **Keyboard** | 3d | 2022-06-21 | 2022-06-23 |  |  |
| 71 | 3.2.5.1 | EU | 1d | 2022-06-21 | 2022-06-21 | 60 | 심호정 |
| 72 | 3.2.5.2 | AU | 1d | 2022-06-22 | 2022-06-22 | 71 | 심호정 |
| 73 | 3.2.5.3 | 한글 | 1d | 2022-06-23 | 2022-06-23 | 72 | 박효민 [50%]; 심호정 [50%] |
| 74 | 3.2.6 | 딜러모드에 UUID 입력기능 추가 | 1d | 2022-06-24 | 2022-06-24 | 73 | 심호정 |
| 75 | 3.2.7 | **USB Music** | 4d | 2022-06-15 | 2022-06-20 |  |  |
| 76 | 3.2.7.1 | 음장버튼 추가 및 기능 구현 | 1d | 2022-06-15 | 2022-06-15 |  | 최형욱 |
| 77 | 3.2.7.2 | 한글 인덱스 스크롤 추가 | 3d | 2022-06-16 | 2022-06-20 | 76 | 최형욱 |

| ID | WBS | Task | Duration | Start | Finish | Predecessors | Resources |
| --- | --- | --- | --- | --- | --- | --- | --- |
| 78 | 3.2.8 | **USB Video** | 6d | 2022-06-21 | 2022-06-28 |  |  |
| 79 | 3.2.8.1 | Change Audio 기능 확인 (미구현일 시 기능 구현) | 3d | 2022-06-21 | 2022-06-23 | 77 | 최형욱 |
| 80 | 3.2.8.2 | USB Video >> Display Setting 사양에서 삭제된 탭 제거 | 1d | 2022-06-24 | 2022-06-24 | 79 | 최형욱 |
| 81 | 3.2.8.3 | USB Video >> Display Setting 화면밝기 탭에 사양에서 삭제된 기능 제거 | 1d | 2022-06-27 | 2022-06-27 | 80 | 최형욱 |
| 82 | 3.2.8.4 | USB Video >> Display Setting 우측 이미지 제거 | 1d | 2022-06-28 | 2022-06-28 | 81 | 최형욱 |
| 83 | 3.2.9 | **Update** | 10d | 2022-06-20 | 2022-07-01 |  |  |
| 84 | 3.2.9.1 | Quick update General update | 1d | 2022-06-20 | 2022-06-20 |  | 권다혜 |
| 85 | 3.2.9.2 | SW Update General Update | 1d | 2022-06-21 | 2022-06-21 | 84 | 권다혜 |
| 86 | 3.2.9.3 | SW Update NAVI Failed | 1d | 2022-06-22 | 2022-06-22 | 85 | 권다혜 |
| 87 | 3.2.9.4 | SW Update Reserved Update | 4d | 2022-06-23 | 2022-06-28 | 86 | 권다혜 |
| 88 | 3.2.9.5 | SW Update Canceled | 1d | 2022-06-29 | 2022-06-29 | 87 | 권다혜 |
| 89 | 3.2.9.6 | SW Update General Update > Error | 1d | 2022-06-30 | 2022-06-30 | 88 | 권다혜 |
| 90 | 3.2.9.7 | SW Update > Quick Update > Error | 1d | 2022-07-01 | 2022-07-01 | 89 | 권다혜 |
| 91 | 3.2.10 | All Menu_wbs작성 | 1d | 2022-06-20 | 2022-06-20 |  | 권다혜 |
